# ChemoSmart2

Schedule from MS Project, 2022-10-31 to 2023-01-20, costs in €.

## Calendars

- Standard: Mon-Fri 09:00-13:00, 14:00-18:00; Sat-Sun off.

## Schedule

| ID | WBS | Task | Type | Duration | Start | Finish | Predecessors | Deadline | Cost | Text1 |
| --- | --- | --- | --- | --- | --- | --- | --- | --- | --- | --- |
| 1 | 1 | **ChemoSmart** |  | 60d | 2022-10-31 09:00 | 2023-01-20 18:00 |  |  | 30,800 | 1848000 |
| 2 | 1.1 | **Training** |  | 7d | 2022-10-31 09:00 | 2022-11-08 18:00 |  |  | 3,640 | 235200 |
| 3 | 1.1.1 | Training su tools | manual | 4h | 2022-10-31 09:00 | 2022-10-31 13:00 |  |  | 280 | 16800 |
| 4 | 1.1.2 | Training SDD | manual | 4h | 2022-10-31 14:00 | 2022-10-31 18:00 | 3 |  | 280 | 16800 |
| 5 | 1.1.3 | Training Test Design | manual | 8h | 2022-11-01 09:00 | 2022-11-01 18:00 | 4 |  | 560 | 33600 |
| 6 | 1.1.4 | Training Tecnologie divise per Micro-Team | manual | 20h | 2022-11-02 09:00 | 2022-11-04 13:00 | 5 |  | 1,400 | 84000 |
| 7 | 1.1.5 | Training testing | manual | 16h | 2022-11-04 14:00 | 2022-11-08 13:00 | 6 | 2022-11-08 18:00 | 1,120 | 67200 |
| 8 | 1.2 | **Requirements Elicitation and Analysis** |  | 15d | 2022-11-09 09:00 | 2022-11-29 18:00 | 2 |  | 7,840 | 504000 |
| 9 | 1.2.1 | **Elicitation** |  | 56h | 2022-11-09 09:00 | 2022-11-17 18:00 |  |  | 3,920 |  |
| 10 | 1.2.1.1 | Identificazione degli Attori | manual | 1d | 2022-11-09 09:00 | 2022-11-09 18:00 |  |  | 560 | 33600 |
| 11 | 1.2.1.2 | Analisi del Sistema Attuale | manual | 2h | 2022-11-10 09:00 | 2022-11-10 11:00 | 10 |  | 140 | 8400 |
| 12 | 1.2.1.3 | Analisi ed Introduzione al Sistema Proposto | manual | 6h | 2022-11-10 11:00 | 2022-11-10 18:00 | 11 |  | 420 | 25200 |
| 13 | 1.2.1.4 | Scrittura di scenari e casi d'uso per l'individuazione di RF e RNF | manual | 1d | 2022-11-11 09:00 | 2022-11-11 18:00 | 12 |  | 560 | 33600 |
| 14 | 1.2.1.5 | Individuazione dei Requisiti Funzionali | manual | 1d | 2022-11-14 09:00 | 2022-11-14 18:00 | 13 |  | 560 | 33600 |
| 15 | 1.2.1.6 | Individuazione dei Requisiti Non Funzionali | manual | 1d | 2022-11-15 09:00 | 2022-11-15 18:00 | 14 |  | 560 | 33600 |
| 16 | 1.2.1.7 | Scrittura di scenari e casi d'uso sulla base dei requisiti funzionali | manual | 2d | 2022-11-16 09:00 | 2022-11-17 18:00 | 15 |  | 1,120 | 67200 |
| 17 | 1.2.2 | **Analysis** |  | 4d | 2022-11-18 09:00 | 2022-11-23 18:00 | 16 |  | 2,800 |  |
| 18 | 1.2.2.1 | **Costruzione del Modello ad Oggetti** |  | 2d | 2022-11-18 09:00 | 2022-11-21 18:00 |  |  | 1,680 |  |
| 19 | 1.2.2.1.1 | Individuazione degli oggetti (Entity, Boundary, Control) a partire dai RF, scenari e casi d'uso | manual | 1d | 2022-11-17 09:00 | 2022-11-17 18:00 |  |  | 560 | 33600 |
| 20 | 1.2.2.1.2 | Costruzione del Class Diagram utilizzando gli entity | manual | 1d | 2022-11-18 09:00 | 2022-11-18 18:00 | 19 |  | 560 | 33600 |
| 21 | 1.2.2.1.3 | Costruzione della tabella degli oggetti | manual | 1d | 2022-11-21 09:00 | 2022-11-21 18:00 | 20 |  | 560 | 33600 |
| 22 | 1.2.2.2 | **Costruzione del Modello Dinamico** |  | 2d | 2022-11-22 09:00 | 2022-11-23 18:00 | 21 |  | 1,120 |  |
| 23 | 1.2.2.2.1 | Costruzione dei Sequence Diagrams | manual | 6h | 2022-11-22 09:00 | 2022-11-22 16:00 |  |  | 420 | 25200 |
| 24 | 1.2.2.2.2 | Costruzione degli State Chart Diagrams | manual | 2h | 2022-11-22 16:00 | 2022-11-22 18:00 | 23 |  | 140 | 8400 |
| 25 | 1.2.2.2.3 | Costruzione degli Activity Diagrams | manual | 2h | 2022-11-23 09:00 | 2022-11-23 11:00 | 24 |  | 140 | 8400 |
| 26 | 1.2.2.2.4 | Costruzione dei Navigational Paths | manual | 2h | 2022-11-23 11:00 | 2022-11-23 13:00 | 25 |  | 140 | 8400 |
| 27 | 1.2.2.2.5 | Costruzione dei Mock-ups | manual | 4h | 2022-11-23 14:00 | 2022-11-23 18:00 | 26 |  | 280 | 16800 |
| 28 | 1.2.3 | Stesura e revisione del RAD | manual | 2d | 2022-11-24 09:00 | 2022-11-25 18:00 | 27 |  | 1,120 | 67200 |
| 29 | 1.2.4 | Requirements Analysis Document | milestone, manual | 0h | 2022-11-25 09:00 | 2022-11-25 09:00 |  |  |  |  |

| ID | WBS | Task | Type | Duration | Start | Finish | Predecessors | Cost | Text1 |
| --- | --- | --- | --- | --- | --- | --- | --- | --- | --- |
| 30 | 1.3 | **System Design** |  | 5d | 2022-11-30 09:00 | 2022-12-06 18:00 | 8 | 2,520 | 168000 |
| 31 | 1.3.1 | **Identificare gli obiettivi di Design** |  | 6h | 2022-11-30 09:00 | 2022-11-30 16:00 |  | 420 |  |
| 32 | 1.3.1.1 | Identificazione dei Design Goals | manual | 4h | 2022-11-30 09:00 | 2022-11-30 13:00 |  | 280 | 16800 |
| 33 | 1.3.1.2 | Identificare i trade-offs design goal | manual | 2h | 2022-11-30 14:00 | 2022-11-30 16:00 | 32 | 140 | 8400 |
| 34 | 1.3.2 | **Individuare la decomposizione in sottosistemi** |  | 6h | 2022-12-01 09:00 | 2022-12-01 16:00 |  | 420 |  |
| 35 | 1.3.2.1 | Scelta dell'archittettura del sistema e divisione in layers | manual | 2h | 2022-12-01 09:00 | 2022-12-01 11:00 | 33 | 140 | 8400 |
| 36 | 1.3.2.2 | Divisione del sistema in sottosistemi | manual | 4h | 2022-12-01 11:00 | 2022-12-01 16:00 | 35 | 280 | 16800 |
| 37 | 1.3.3 | **Rifinire la decomposizione per soddisfare gli obiettivi di design** |  | 21h | 2022-12-02 09:00 | 2022-12-06 15:00 |  | 1,470 |  |
| 38 | 1.3.3.1 | Mappare i sottosistemi su un hardware | manual | 1h | 2022-12-02 09:00 | 2022-12-02 10:00 | 36 | 70 | 4200 |
| 39 | 1.3.3.2 | Specifica dei Dati Persistenti | manual | 12h | 2022-12-02 10:00 | 2022-12-05 15:00 | 38 | 840 | 50400 |
| 40 | 1.3.3.3 | Definire la Matrice per il controllo degli accessi | manual | 1h | 2022-12-05 15:00 | 2022-12-05 16:00 | 39 | 70 | 4200 |
| 41 | 1.3.3.4 | Definire il Flusso di Controllo globale del Sistema | manual | 1h | 2022-12-05 16:00 | 2022-12-05 17:00 | 40 | 70 | 4200 |
| 42 | 1.3.3.5 | Identificare i servizi per ogni sottosistema | manual | 4h | 2022-12-05 17:00 | 2022-12-06 12:00 | 41 | 280 | 16800 |
| 43 | 1.3.3.6 | Identificare le Boundary Conditions | manual | 2h | 2022-12-06 12:00 | 2022-12-06 15:00 | 42 | 140 | 8400 |
| 44 | 1.3.4 | Stesura e revisione dell'SDD | manual | 3h | 2022-12-06 15:00 | 2022-12-06 18:00 | 43 | 210 | 12600 |
| 45 | 1.3.5 | System Design Document | milestone, manual | 0h | 2022-12-06 18:00 | 2022-12-06 18:00 | 44 |  |  |
| 46 | 1.4 | **System Test Design** |  | 3d | 2022-12-07 09:00 | 2022-12-09 18:00 | 30, 45 | 1,680 | 100800 |
| 47 | 1.4.1 | Identificazione dei casi di test funzionali tramite category partition | manual | 12h | 2022-12-07 09:00 | 2022-12-08 13:00 |  | 840 | 50400 |
| 48 | 1.4.2 | Scrittura dei casi di test | manual | 12h | 2022-12-08 09:00 | 2022-12-09 13:00 |  | 840 | 50400 |
| 49 | 1.4.3 | Test Plan e Test Case Specification | milestone, manual | 0h | 2022-12-09 09:00 | 2022-12-09 09:00 |  |  |  |
| 50 | 1.5 | Consegna Intermedia | milestone, manual | 0h | 2022-12-12 09:00 | 2022-12-12 09:00 | 46 |  |  |
| 51 | 1.6 | **Object Design** |  | 5d | 2022-12-12 09:00 | 2022-12-16 18:00 | 50 | 2,100 | 134400 |
| 52 | 1.6.1 | **Riuso** |  | 6h | 2022-12-13 09:00 | 2022-12-13 16:00 |  | 420 |  |
| 53 | 1.6.1.1 | Identificazione ed integrazione di componenti COTS | manual | 2h | 2022-12-13 09:00 | 2022-12-13 11:00 |  | 140 | 8400 |
| 54 | 1.6.1.2 | Identificazione e integrazione di Design Patterns utili | manual | 4h | 2022-12-13 11:00 | 2022-12-13 16:00 | 53 | 280 | 16800 |

| ID | WBS | Task | Type | Duration | Start | Finish | Predecessors | Constraint | Cost | Text1 |
| --- | --- | --- | --- | --- | --- | --- | --- | --- | --- | --- |
| 55 | 1.6.2 | **Specifica delle interfacce** |  | 20h | 2022-12-14 09:00 | 2022-12-16 13:00 |  |  | 1,400 |  |
| 56 | 1.6.2.1 | Identificazione dei packages a partire dai sottosistemi | manual | 1h | 2022-12-13 16:00 | 2022-12-13 17:00 | 54 |  | 70 | 4200 |
| 57 | 1.6.2.2 | Identificazione delle classi per ogni package | manual | 1h | 2022-12-13 17:00 | 2022-12-13 18:00 | 56 |  | 70 | 4200 |
| 58 | 1.6.2.3 | Specifica degli attributi e delle signatures dei metodi | manual | 12h | 2022-12-14 09:00 | 2022-12-15 13:00 | 57 |  | 840 | 50400 |
| 59 | 1.6.2.4 | Specifica dei vincoli: invarianti, precondizioni e postcondizioni | manual | 4h | 2022-12-15 14:00 | 2022-12-15 18:00 | 58 |  | 280 | 16800 |
| 60 | 1.6.2.5 | Specifica delle eccezioni | manual | 2h | 2022-12-16 09:00 | 2022-12-16 11:00 | 59 |  | 140 | 8400 |
| 61 | 1.6.3 | Scrittura e revisione dell'ODD | manual | 4h | 2022-12-16 11:00 | 2022-12-16 16:00 | 60 |  | 280 | 16800 |
| 62 | 1.6.4 | Object Design Document | milestone, manual | 0h | 2022-12-16 09:00 | 2022-12-16 09:00 |  |  |  |  |
| 63 | 1.7 | **System Implementation** |  | 168h | 2022-12-19 09:00 | 2023-01-16 18:00 | 51 |  | 11,480 | 504000 |
| 64 | 1.7.1 | Setup dell'ambiente di lavoro | manual | 2h | 2022-12-19 09:00 | 2022-12-19 11:00 |  |  | 140 | 8400 |
| 65 | 1.7.2 | Setup del Database | manual | 4h | 2022-12-19 11:00 | 2022-12-19 16:00 | 64 |  | 280 | 16800 |
| 66 | 1.7.3 | Implementazione delle funzionalità a priorità elevata attraverso Scrum | manual | 14d | 2022-12-20 09:00 | 2023-01-06 18:00 | 65 |  | 7,840 | 470400 |
| 67 | 1.7.4 | Scrittura delle classi di test per Unit ed Integration | manual | 40h | 2023-01-09 09:00 | 2023-01-13 18:00 | 66 |  | 2,800 | 168000 |
| 68 | 1.7.5 | Generazione della Javadoc e creazione della pagina per il completamento dell'ODD | manual | 6h | 2023-01-16 09:00 | 2023-01-16 16:00 | 67 |  | 420 | 25200 |
| 69 | 1.7.6 | Applicativo e Javadoc | milestone, manual | 0h | 2023-01-16 16:00 | 2023-01-16 16:00 | 68 |  |  |  |
| 70 | 1.8 | **System Testing** |  | 3d | 2023-01-17 09:00 | 2023-01-19 18:00 | 63 |  | 1,540 | 134400 |
| 71 | 1.8.1 | Esecuzione dei test di unità | manual | 1d | 2023-01-17 09:00 | 2023-01-17 18:00 |  |  | 560 | 33600 |
| 72 | 1.8.2 | Esecuzione dei test di integrazione | manual | 1d | 2023-01-18 09:00 | 2023-01-18 18:00 | 71 |  | 560 | 33600 |
| 73 | 1.8.3 | Esecuzione dei test di sistema | manual | 6h | 2023-01-19 09:00 | 2023-01-19 16:00 | 72 |  | 420 | 25200 |
| 74 | 1.8.4 | Test Incident Report e Test Summary Report | milestone, manual | 0h | 2023-01-19 18:00 | 2023-01-19 18:00 | 73 |  |  |  |
| 75 | 1.9 | Consegna Finale | milestone, manual | 0h | 2023-01-20 09:00 | 2023-01-20 09:00 |  | start no earlier than 2023-01-20 09:00 |  |  |
